# Cronograma

Schedule from MS Project, 2023-10-05 to 2023-12-13, costs in €, A marks actual dates.

## Calendars

- Estándar: Mon-Fri 09:00-13:00, 15:00-19:00; Sat-Sun off. Exceptions (off unless hours are given): 2023-10-28 to 2023-10-29 09:00-13:00, 15:00-19:00, 2023-11-11 to 2023-11-12 09:00-13:00, 15:00-19:00, 2023-12-02 to 2023-12-03 09:00-13:00, 15:00-19:00.

## Resources

| Resource | Group | Rate |
| --- | --- | --- |
| Equipo de dirección | Dirección | 37 |
| Equipo de desarrollo | Desarrollo | 25 |
| Mario Aroca Páez (Dirección) | Equipo de Dirección | 37 |
| Laura Roldán Merat (Dirección) | Equipo de Dirección | 37 |
| Enrique Caballero Muñoz (Dirección) | Equipo de Dirección | 37 |
| Claudia Gilabert Prieto (Dirección) | Equipo de Dirección | 37 |
| Iván Sánchez San José (Dirección) | Equipo de Dirección | 37 |
| Mario Aroca Páez (Desarrollo) | Equipo de Desarrollo | 25 |
| Laura Roldán Merat (Desarrollo) | Equipo de Desarrollo | 25 |
| Enrique Caballero Muñoz (Desarrollo) | Equipo de Desarrollo | 25 |
| Claudia Gilabert Pietro (Desarrollo) | Equipo de Desarrollo | 25 |
| Iván Sánchez San José (Desarrollo) | Equipo de Desarrollo | 25 |
| Desplazamiento del equipo | Coste Directo | 60 |
| Licencia MS Project | Coste Directo | 100 |
| Licencia GitHub Team | Coste Directo | 36.7 |
| Hosting de la Aplicación | Coste Directo | 20 |
| Equipos de Trabajo | Coste Indirecto10 | 104.17 |
| Seguros | Coste Indirecto | 166.67 |
| Formación del Equipo | Coste Indirecto | 106.85 |
| IVA total del proyecto | Coste Indirecto | 2506.09 |

## Schedule

| ID | WBS | Task | Duration | Start | Finish | Predecessors | Complete | Actual start | Actual finish | Constraint | Resources | Work | Actual work | Cost | Actual cost |
| --- | --- | --- | --- | --- | --- | --- | --- | --- | --- | --- | --- | --- | --- | --- | --- |
| 1 | 1.1 | **Inicio del proyecto** | 5d | 2023-10-05 09:00 A | 2023-10-11 19:00 |  | 100% |  | 2023-10-11 10:04 |  |  | 28.66h | 28.66h | 1,060.42 | 1,060.42 |
| 2 | 1.1.A | Preparar una reunión inicial con el patrocinador y el cliente | 2h | 2023-10-05 09:00 A | 2023-10-05 11:00 A |  | 100% |  |  |  | Claudia Gilabert Prieto (Dirección); Enrique Caballero Muñoz (Dirección); Iván Sánchez San José (Dirección); Laura Roldán Merat (Dirección); Mario Aroca Páez (Dirección) | 10h | 10h | 370 | 370 |
| 3 | 1.1.B | Elaborar el Acta de Constitución | 2.5h | 2023-10-09 09:00 A | 2023-10-09 11:30 A | 2 | 100% |  |  | finish no earlier than 2023-10-09 19:00 | Claudia Gilabert Prieto (Dirección); Enrique Caballero Muñoz (Dirección); Iván Sánchez San José (Dirección); Laura Roldán Merat (Dirección); Mario Aroca Páez (Dirección) | 12.5h | 12.5h | 462.5 | 462.5 |
| 4 | 1.1.C | Elaborar el registro de interesados y de supuestos | 2h | 2023-10-10 09:00 A | 2023-10-10 11:00 A | 3 | 100% |  |  |  | Laura Roldán Merat (Dirección); Mario Aroca Páez (Dirección) | 4h | 4h | 148 | 148 |
| 5 | 1.1.D | Revisar el Acta y que el cliente lo apruebe | 1.08h | 2023-10-11 09:00 A | 2023-10-11 10:04 A | 3 | 100% |  |  |  | Enrique Caballero Muñoz (Dirección); Iván Sánchez San José (Dirección) | 2.16h | 2.16h | 79.92 | 79.92 |
| 6 | 1.2 | **Planificación del proyecto** | 22d | 2023-10-12 09:00 | 2023-11-08 19:00 | 1 | 100% | 2023-10-16 09:00 | 2023-11-06 16:00 |  |  | 74h | 74h | 2,714 | 2,714 |
| 7 | 1.2.A | Gestionar el alcance y realizar el enunciado del alcance | 2h | 2023-10-16 09:00 A | 2023-10-16 11:00 A |  | 100% |  |  | finish no earlier than 2023-10-16 19:00 | Claudia Gilabert Prieto (Dirección); Enrique Caballero Muñoz (Dirección); Iván Sánchez San José (Dirección); Laura Roldán Merat (Dirección); Mario Aroca Páez (Dirección) | 10h | 10h | 370 | 370 |
| 8 | 1.2.B | Gestionar los requisitos y registrarlos | 2h | 2023-10-16 09:00 A | 2023-10-16 11:00 A |  | 100% |  |  | finish no earlier than 2023-10-16 19:00 | Claudia Gilabert Prieto (Dirección); Enrique Caballero Muñoz (Dirección); Iván Sánchez San José (Dirección); Laura Roldán Merat (Dirección); Mario Aroca Páez (Dirección) | 10h | 10h | 370 | 370 |
| 9 | 1.2.C | Crear la EDT y el diccionario de la EDT | 5.17h | 2023-10-17 09:00 A | 2023-10-17 16:10 A | 7, 8 | 100% |  |  | finish no earlier than 2023-10-23 19:00 | Laura Roldán Merat (Dirección); Mario Aroca Páez (Dirección) | 10.34h | 10.34h | 382.58 | 382.58 |
| 10 | 1.2.D | Gestionar el cronograma | 4.83h | 2023-10-17 09:00 A | 2023-10-17 15:49 A | 9 | 100% |  |  | finish no earlier than 2023-10-26 19:00 | Enrique Caballero Muñoz (Dirección); Mario Aroca Páez (Dirección) | 9.66h | 9.66h | 357.42 | 357.42 |
| 11 | 1.2.J | Gestionar los recursos | 2h | 2023-10-27 09:00 A | 2023-10-27 11:00 A |  | 100% |  |  | start no earlier than 2023-10-27 09:00 | Claudia Gilabert Prieto (Dirección); Enrique Caballero Muñoz (Dirección) | 4h | 4h | 148 | 148 |
| 12 | 1.2.F | Gestionar las adquisiciones | 2h | 2023-10-28 09:00 A | 2023-10-28 11:00 A |  | 100% |  |  | start no earlier than 2023-10-28 09:00 | Iván Sánchez San José (Dirección); Laura Roldán Merat (Dirección) | 4h | 4h | 148 | 148 |
| 13 | 1.2.G | Gestionar los riesgos | 2h | 2023-10-29 09:00 A | 2023-10-29 11:00 A |  | 100% |  |  | start no earlier than 2023-10-29 09:00 | Iván Sánchez San José (Dirección); Mario Aroca Páez (Dirección) | 4h | 4h | 148 | 148 |
| 14 | 1.2.H | Gestionar la calidad | 2h | 2023-10-30 09:00 A | 2023-10-30 11:00 A |  | 100% |  |  | start no earlier than 2023-10-30 09:00 | Claudia Gilabert Prieto (Dirección); Mario Aroca Páez (Dirección) | 4h | 4h | 148 | 148 |
| 15 | 1.2.I | Gestionar las comunicaciones | 2h | 2023-10-31 09:00 A | 2023-10-31 11:00 A |  | 100% |  |  | start no earlier than 2023-10-31 09:00 | Enrique Caballero Muñoz (Dirección); Laura Roldán Merat (Dirección) | 4h | 4h | 148 | 148 |
| 16 | 1.2.E | Gestionar los costes | 2h | 2023-11-01 09:00 A | 2023-11-01 11:00 A | 9, 10, 12, 11 | 100% |  |  | start no earlier than 2023-11-01 09:00 | Enrique Caballero Muñoz (Dirección); Mario Aroca Páez (Desarrollo) | 4h | 4h | 124 | 124 |
| 17 | 1.2.K | Revisar y cerrar los documentos junto con el patrocinador y cliente | 5h | 2023-11-06 09:00 A | 2023-11-06 16:00 A | 7, 8, 9, 10, 12, 13, 14, 15, 11, 16 | 100% |  |  | start no earlier than 2023-11-05 09:00 | Laura Roldán Merat (Dirección); Mario Aroca Páez (Dirección) | 10h | 10h | 370 | 370 |
| 18 | 2.1.1.1 | **Adquisición de recursos** | 2d | 2023-11-09 09:00 A | 2023-11-10 19:00 | 6 | 100% |  | 2023-11-09 11:09 |  |  | 16.2h | 16.2h | 599.4 | 599.4 |
| 19 | 2.1.1.1.A | Contratar al equipo de desarrollo | 1.08h | 2023-11-09 09:00 A | 2023-11-09 10:04 A |  | 100% |  |  |  | Claudia Gilabert Prieto (Dirección); Enrique Caballero Muñoz (Dirección); Iván Sánchez San José (Dirección); Laura Roldán Merat (Dirección); Mario Aroca Páez (Dirección) | 5.4h | 5.4h | 199.8 | 199.8 |
| 20 | 2.1.1.1.B | Instalar Visual Studio Code como IDE, Django Framework, Python y Git | 1.08h | 2023-11-09 09:00 A | 2023-11-09 10:04 A |  | 100% |  |  |  | Claudia Gilabert Prieto (Dirección); Enrique Caballero Muñoz (Dirección); Iván Sánchez San José (Dirección); Laura Roldán Merat (Dirección); Mario Aroca Páez (Dirección) | 5.4h | 5.4h | 199.8 | 199.8 |
| 21 | 2.1.1.1.C | Formar al equipo de desarrollo | 1.08h | 2023-11-09 10:04 A | 2023-11-09 11:09 A | 19, 20 | 100% |  |  |  | Claudia Gilabert Prieto (Dirección); Enrique Caballero Muñoz (Dirección); Iván Sánchez San José (Dirección); Laura Roldán Merat (Dirección); Mario Aroca Páez (Dirección) | 5.4h | 5.4h | 199.8 | 199.8 |
| 22 | 2.1.1.2 | **Gestión de usuarios** | 7d | 2023-11-12 09:00 A | 2023-11-19 19:00 | 18 | 100% |  | 2023-11-16 11:45 |  |  | 55.5h | 55.5h | 1,387.5 | 1,387.5 |
| 23 | 2.1.1.2.A | Implementar la gestión de usuarios (CRUD) | 5.17h | 2023-11-12 09:00 A | 2023-11-12 16:10 A |  | 100% |  |  | start no earlier than 2023-11-11 09:00 | Claudia Gilabert Pietro (Desarrollo); Mario Aroca Páez (Desarrollo) | 10.34h | 10.34h | 258.5 | 258.5 |
| 24 | 2.1.1.2.B | Implementar el registro e inicio de sesión de usuarios | 3.83h | 2023-11-13 09:00 A | 2023-11-13 12:49 A | 23 | 100% |  |  |  | Laura Roldán Merat (Desarrollo); Iván Sánchez San José (Desarrollo) | 7.66h | 7.66h | 191.5 | 191.5 |
| 25 | 2.1.1.2.C | Implementar la gestión de clientes para administradores (lectura, edición y borrado) | 8h | 2023-11-14 09:00 A | 2023-11-14 19:00 A | 23 | 100% |  |  |  | Enrique Caballero Muñoz (Desarrollo); Claudia Gilabert Pietro (Desarrollo) | 16h | 16h | 400 | 400 |
| 26 | 2.1.1.2.D | Implementar el diseño visual de la aplicación | 8h | 2023-11-15 09:00 A | 2023-11-15 19:00 A | 23, 24, 25 | 100% |  |  |  | Claudia Gilabert Pietro (Desarrollo); Iván Sánchez San José (Desarrollo) | 16h | 16h | 400 | 400 |
| 27 | 2.1.1.3.E | Realizar pruebas unitarias de la funcionalidad | 2.75h | 2023-11-14 09:00 A | 2023-11-16 11:45 A | 23, 24, 25, 26 | 100% |  |  |  | Laura Roldán Merat (Desarrollo); Mario Aroca Páez (Desarrollo) | 5.5h | 5.5h | 137.5 | 137.5 |

| ID | WBS | Task | Duration | Start | Finish | Predecessors | Complete | Actual start | Actual finish | Total slack | Free slack | Constraint | Resources | Work | Actual work | Cost | Actual cost |
| --- | --- | --- | --- | --- | --- | --- | --- | --- | --- | --- | --- | --- | --- | --- | --- | --- | --- |
| 28 | 2.1.1.3 | **Gestión de las obras de arte** | 7d | 2023-11-12 09:00 | 2023-11-19 19:00 | 18 | 100% | 2023-11-14 09:00 | 2023-11-15 16:10 |  |  |  |  | 30.84h | 30.84h | 771 | 771 |
| 29 | 2.1.1.3.A | Implementación de CRUD de obras de arte para administradores | 4.5h | 2023-11-14 09:00 A | 2023-11-14 15:30 A |  | 100% |  |  |  |  | start no earlier than 2023-11-14 09:00 | Enrique Caballero Muñoz (Desarrollo); Iván Sánchez San José (Desarrollo) | 9h | 9h | 225 | 225 |
| 30 | 2.1.1.3.B | Implementación de lectura de obras de artes para los clientes | 2.25h | 2023-11-14 15:30 A | 2023-11-14 17:45 A | 29 | 100% |  |  |  |  |  | Claudia Gilabert Pietro (Desarrollo); Mario Aroca Páez (Desarrollo) | 4.5h | 4.5h | 112.5 | 112.5 |
| 31 | 2.1.1.3.C | Implementar la búsqueda y filtro de obras de arte | 3h | 2023-11-14 15:30 A | 2023-11-14 18:30 A | 29 | 100% |  |  |  |  |  | Laura Roldán Merat (Desarrollo); Enrique Caballero Muñoz (Desarrollo) | 6h | 6h | 150 | 150 |
| 32 | 2.1.1.3.D | Implementar el diseño visual de la vista de obras de artes | 2.92h | 2023-11-14 18:30 A | 2023-11-15 11:25 A | 29, 30, 31 | 100% |  |  |  |  |  | Enrique Caballero Muñoz (Desarrollo); Iván Sánchez San José (Desarrollo) | 5.84h | 5.84h | 146 | 146 |
| 33 | 2.1.1.3.E | Realizar pruebas unitarias de la funcionalidad | 2.75h | 2023-11-15 11:25 A | 2023-11-15 16:10 A | 29, 30, 31, 32 | 100% |  |  |  |  |  | Claudia Gilabert Pietro (Desarrollo); Mario Aroca Páez (Desarrollo) | 5.5h | 5.5h | 137.5 | 137.5 |
| 34 | 2.1.2.1 | **Compra de obras de arte** | 6d | 2023-11-20 09:00 | 2023-11-26 19:00 | 28, 22 |  |  |  |  |  |  |  | 35.82h |  | 895.5 |  |
| 35 | 2.1.2.1.A | Implementar la agregación de cuadros en un carrito de la compra | 3h | 2023-11-20 09:00 | 2023-11-20 12:00 |  |  |  |  | 17.3d | 0d |  | Claudia Gilabert Pietro (Desarrollo); Enrique Caballero Muñoz (Desarrollo) | 6h |  | 150 |  |
| 36 | 2.1.2.1.B | Modificar y eliminar elementos dentro del carrito de la compra por parte del cliente | 3.08h | 2023-11-20 12:00 | 2023-11-20 17:04 | 35 |  |  |  | 17.3d | 0.09d |  | Laura Roldán Merat (Desarrollo); Mario Aroca Páez (Desarrollo) | 6.16h |  | 154 |  |
| 37 | 2.1.2.1.C | Seleccionar métodos de pago y rellenar formulario de datos | 2h | 2023-11-20 09:00 | 2023-11-20 11:00 |  |  |  |  | 17.21d | 0d |  | Claudia Gilabert Pietro (Desarrollo); Iván Sánchez San José (Desarrollo) | 4h |  | 100 |  |
| 38 | 2.1.2.1.D | Implementar pasarelas de pago | 4.83h | 2023-11-20 11:00 | 2023-11-20 17:49 | 37 |  |  |  | 17.21d | 0d |  | Mario Aroca Páez (Desarrollo); Laura Roldán Merat (Desarrollo) | 9.66h |  | 241.5 |  |
| 39 | 2.1.2.1.E | Implementar el diseño visual de la vista de las compras de obras de artes | 2.08h | 2023-11-20 12:00 | 2023-11-20 16:04 | 35, 37 |  |  |  | 17.43d | 0.22d |  | Claudia Gilabert Pietro (Desarrollo); Iván Sánchez San José (Desarrollo) | 4.16h |  | 104 |  |
| 40 | 2.1.2.1.F | Realizar pruebas unitarias de la funcionalidad | 2.92h | 2023-11-20 17:49 | 2023-11-21 10:45 | 35, 36, 37, 38, 39 |  |  |  | 17.21d |  |  | Iván Sánchez San José (Desarrollo); Enrique Caballero Muñoz (Desarrollo) | 5.84h |  | 146 |  |
| 41 | 2.1.3.1 | **Gestión de pedidos** | 7d | 2023-11-27 09:00 | 2023-12-03 19:00 | 34 |  |  |  |  |  |  |  | 35.36h |  | 884 |  |
| 42 | 2.1.3.1.A | Implementar la visualización del pedido por el cliente según ID | 4.17h | 2023-11-27 09:00 | 2023-11-27 15:10 |  |  |  |  | 13.43d | 3.48d |  | Claudia Gilabert Pietro (Desarrollo); Enrique Caballero Muñoz (Desarrollo) | 8.34h |  | 208.5 |  |
| 43 | 2.1.3.1.B | Implementar la visualización del estado del pedido por el cliente | 4h | 2023-11-28 09:00 | 2023-11-28 13:00 |  |  |  |  | 13.1d | 2.5d | start no earlier than 2023-11-28 09:00 | Iván Sánchez San José (Desarrollo); Laura Roldán Merat (Desarrollo) | 8h |  | 200 |  |
| 44 | 2.1.3.1.C | Implementar la visualización de todos los pedidos por el administrador | 4.17h | 2023-11-29 09:00 | 2023-11-29 15:10 |  |  |  |  | 12.08d | 1.48d | start no earlier than 2023-11-29 09:00 | Claudia Gilabert Pietro (Desarrollo); Mario Aroca Páez (Desarrollo) | 8.34h |  | 208.5 |  |
| 45 | 2.1.3.1.D | Implementar el diseño visual de la vista de los pedidos | 2.17h | 2023-11-30 09:00 | 2023-11-30 11:10 |  |  |  |  | 11.33d | 0.73d | start no earlier than 2023-11-30 09:00 | Enrique Caballero Muñoz (Desarrollo); Iván Sánchez San José (Desarrollo) | 4.34h |  | 108.5 |  |
| 46 | 2.1.3.1.E | Realizar pruebas unitarias de la funcionalidad | 3.17h | 2023-12-01 09:00 | 2023-12-01 12:10 | 42, 43, 44, 45 |  |  |  | 10.6d |  | start no earlier than 2023-12-01 09:00 | Laura Roldán Merat (Desarrollo); Mario Aroca Páez (Desarrollo) | 6.34h |  | 158.5 |  |
| 47 | 2.2.1 | **Monitorización y control del avance del proyecto** | 25d | 2023-11-09 09:00 | 2023-12-07 19:00 | 1, 6 |  |  |  |  |  |  |  | 85.35h |  | 3,157.95 |  |
| 48 | 2.2.1.A | Validar y controlar el alcance | 2h | 2023-11-09 09:00 | 2023-11-09 11:00 |  |  |  |  | 27.7d |  |  | Claudia Gilabert Prieto (Dirección); Enrique Caballero Muñoz (Dirección); Iván Sánchez San José (Dirección); Laura Roldán Merat (Dirección); Mario Aroca Páez (Dirección) | 10h |  | 370 |  |
| 49 | 2.2.1.B | Controlar el cronograma | 3h | 2023-11-10 09:00 | 2023-11-10 12:00 |  |  |  |  | 27.62d |  | start no earlier than 2023-11-10 09:00 | Claudia Gilabert Prieto (Dirección); Enrique Caballero Muñoz (Dirección); Iván Sánchez San José (Dirección); Laura Roldán Merat (Dirección); Mario Aroca Páez (Dirección) | 15h |  | 555 |  |
| 50 | 2.2.1.C | Controlar los costes | 2.08h | 2023-11-11 09:00 | 2023-11-11 11:04 |  |  |  |  | 26.74d |  | start no earlier than 2023-11-11 09:00 | Claudia Gilabert Prieto (Dirección); Enrique Caballero Muñoz (Dirección); Iván Sánchez San José (Dirección); Laura Roldán Merat (Dirección); Mario Aroca Páez (Dirección) | 10.4h |  | 384.8 |  |
| 51 | 2.2.1.D | Controlar la calidad | 2.08h | 2023-11-12 09:00 | 2023-11-12 11:04 |  |  |  |  | 25.74d |  | start no earlier than 2023-11-12 09:00 | Claudia Gilabert Prieto (Dirección); Enrique Caballero Muñoz (Dirección); Iván Sánchez San José (Dirección); Laura Roldán Merat (Dirección); Mario Aroca Páez (Dirección) | 10.4h |  | 384.8 |  |
| 52 | 2.2.1.E | Controlar los recursos y adquisiciones | 1.67h | 2023-11-13 09:00 | 2023-11-13 10:40 |  |  |  |  | 24.79d |  | start no earlier than 2023-11-13 09:00 | Claudia Gilabert Prieto (Dirección); Enrique Caballero Muñoz (Dirección); Iván Sánchez San José (Dirección); Laura Roldán Merat (Dirección); Mario Aroca Páez (Dirección) | 8.35h |  | 308.95 |  |
| 53 | 2.2.1.F | Monitorizar las comunicaciones | 2.08h | 2023-11-14 09:00 | 2023-11-14 11:04 |  |  |  |  | 23.74d |  | start no earlier than 2023-11-14 09:00 | Claudia Gilabert Prieto (Dirección); Enrique Caballero Muñoz (Dirección); Iván Sánchez San José (Dirección); Laura Roldán Merat (Dirección); Mario Aroca Páez (Dirección) | 10.4h |  | 384.8 |  |
| 54 | 2.2.1.G | Monitorizar los riesgos | 2.08h | 2023-11-15 09:00 | 2023-11-15 11:04 |  |  |  |  | 22.74d |  | start no earlier than 2023-11-15 09:00 | Claudia Gilabert Prieto (Dirección); Enrique Caballero Muñoz (Dirección); Iván Sánchez San José (Dirección); Laura Roldán Merat (Dirección); Mario Aroca Páez (Dirección) | 10.4h |  | 384.8 |  |
| 55 | 2.2.1.H | Monitorizar los interesados | 2.08h | 2023-11-16 09:00 | 2023-11-16 11:04 |  |  |  |  | 21.74d |  | start no earlier than 2023-11-16 09:00 | Claudia Gilabert Prieto (Dirección); Enrique Caballero Muñoz (Dirección); Iván Sánchez San José (Dirección); Laura Roldán Merat (Dirección); Mario Aroca Páez (Dirección) | 10.4h |  | 384.8 |  |

| ID | WBS | Task | Duration | Start | Finish | Predecessors | Total slack | Free slack | Constraint | Resources | Work | Cost |
| --- | --- | --- | --- | --- | --- | --- | --- | --- | --- | --- | --- | --- |
| 56 | 2.2.2 | **Control de cambios** | 25d | 2023-11-09 09:00 | 2023-12-07 19:00 | 1, 6 |  |  |  |  | 26.2h | 969.4 |
| 57 | 2.2.2.A | Realizar informes de desempeño del equipo | 1.08h | 2023-11-09 09:00 | 2023-11-09 10:04 |  | 27.82d |  |  | Claudia Gilabert Prieto (Dirección); Enrique Caballero Muñoz (Dirección); Iván Sánchez San José (Dirección); Laura Roldán Merat (Dirección); Mario Aroca Páez (Dirección) | 5.4h | 199.8 |
| 58 | 2.2.2.B | Generar una Solicitud de Cambio cuando sea necesario | 1.08h | 2023-11-10 09:00 | 2023-11-10 10:04 |  | 27.86d |  | start no earlier than 2023-11-10 09:00 | Claudia Gilabert Prieto (Dirección); Enrique Caballero Muñoz (Dirección); Iván Sánchez San José (Dirección); Laura Roldán Merat (Dirección); Mario Aroca Páez (Dirección) | 5.4h | 199.8 |
| 59 | 2.2.2.C | Revisar la solicitud que corresponda al equipo de dirección o comité | 1.08h | 2023-11-13 09:00 | 2023-11-13 10:04 |  | 24.86d |  | start no earlier than 2023-11-13 09:00 | Claudia Gilabert Prieto (Dirección); Enrique Caballero Muñoz (Dirección); Iván Sánchez San José (Dirección); Laura Roldán Merat (Dirección); Mario Aroca Páez (Dirección) | 5.4h | 199.8 |
| 60 | 2.2.2.D | Efectuar cambio en caso de aceptación | 2h | 2023-11-14 09:00 | 2023-11-14 11:00 |  | 23.75d |  | start no earlier than 2023-11-14 09:00 | Claudia Gilabert Prieto (Dirección); Enrique Caballero Muñoz (Dirección); Iván Sánchez San José (Dirección); Laura Roldán Merat (Dirección); Mario Aroca Páez (Dirección) | 10h | 370 |
| 61 | 3.1 | **Entrega del proyecto** | 4d | 2023-12-08 09:00 | 2023-12-13 19:00 | 56, 47, 41 |  |  |  |  | 14.3h | 357.5 |
| 62 | 3.1.A | Gestionar el versionado de la página web y migración de datos | 2.5h | 2023-12-08 09:00 | 2023-12-08 11:30 |  | 2.95d | 0d |  | Claudia Gilabert Pietro (Desarrollo) | 2.5h | 62.5 |
| 63 | 3.1.B | Empaquetar y distribuir la aplicación | 2.08h | 2023-12-08 11:30 | 2023-12-08 15:34 | 62 | 2.95d | 0d |  | Enrique Caballero Muñoz (Desarrollo); Iván Sánchez San José (Desarrollo) | 4.16h | 104 |
| 64 | 3.1.C | Realizar la entrega y el despliegue de la aplicación | 3.82h | 2023-12-08 15:34 | 2023-12-11 09:24 | 63 | 2.95d |  |  | Laura Roldán Merat (Desarrollo); Mario Aroca Páez (Desarrollo) | 7.64h | 191 |
| 65 | 3.2 | **Cierre del proyecto** | 4d | 2023-12-08 09:00 | 2023-12-13 19:00 | 41, 47, 56 |  |  |  |  | 11.72h | 433.64 |
| 66 | 3.2.A | Reunión de cierre del proyecto | 1.08h | 2023-12-08 09:00 | 2023-12-08 10:04 |  | 3.47d | 0d |  | Claudia Gilabert Prieto (Dirección); Enrique Caballero Muñoz (Dirección); Iván Sánchez San José (Dirección); Laura Roldán Merat (Dirección); Mario Aroca Páez (Dirección) | 5.4h | 199.8 |
| 67 | 3.2.B | Realizar el Informe de Cierre | 1.08h | 2023-12-08 10:04 | 2023-12-08 11:09 | 66 | 3.47d | 0d |  | Enrique Caballero Muñoz (Dirección); Iván Sánchez San José (Dirección) | 2.16h | 79.92 |
| 68 | 3.2.C | Realizar el Acta de Aceptación del Producto | 2.08h | 2023-12-08 11:09 | 2023-12-08 15:14 | 67 | 3.47d |  |  | Laura Roldán Merat (Dirección); Mario Aroca Páez (Dirección) | 4.16h | 153.92 |
| 69 | 3.3 | **Reporte final del proyecto** | 4d | 2023-12-08 09:00 | 2023-12-13 19:00 | 41, 47, 56 |  |  |  |  | 19.8h | 732.6 |
| 70 | 3.3.B | Revisión del cronograma final con desviaciones | 1.08h | 2023-12-08 09:00 | 2023-12-08 10:04 |  | 3.49d | 0d |  | Claudia Gilabert Prieto (Dirección); Enrique Caballero Muñoz (Dirección); Iván Sánchez San José (Dirección); Laura Roldán Merat (Dirección); Mario Aroca Páez (Dirección) | 5.4h | 199.8 |
| 71 | 3.3.A | Resumir el presupuesto final del proyecto | 1.08h | 2023-12-08 10:04 | 2023-12-08 11:09 | 70 | 3.54d | 0.05d |  | Claudia Gilabert Prieto (Dirección); Enrique Caballero Muñoz (Dirección); Iván Sánchez San José (Dirección); Laura Roldán Merat (Dirección); Mario Aroca Páez (Dirección) | 5.4h | 199.8 |
| 72 | 3.3.C | Archivar toda la documentación pertinente del proyecto | 1.5h | 2023-12-08 10:04 | 2023-12-08 11:34 | 70 | 3.49d | 0d |  | Claudia Gilabert Prieto (Dirección) | 1.5h | 55.5 |
| 73 | 3.3.D | Anotar las lecciones aprendidas | 1.5h | 2023-12-08 11:34 | 2023-12-08 15:04 | 70, 71, 72 | 3.49d |  |  | Claudia Gilabert Prieto (Dirección); Enrique Caballero Muñoz (Dirección); Iván Sánchez San José (Dirección); Laura Roldán Merat (Dirección); Mario Aroca Páez (Dirección) | 7.5h | 277.5 |
