# Cronograma

Schedule from MS Project, 2023-10-05 to 2023-12-13, costs in €, A marks actual dates.

## Calendars

- Estándar: Mon-Fri 09:00-13:00, 15:00-19:00; Sat-Sun off. Exceptions (off unless hours are given): 2023-10-28 to 2023-10-29 09:00-13:00, 15:00-19:00, 2023-11-11 to 2023-11-12 09:00-13:00, 15:00-19:00, 2023-11-26 09:00-13:00, 15:00-19:00, 2023-12-02 to 2023-12-03 09:00-13:00, 15:00-19:00.

## Resources

| Resource | Group | Rate |
| --- | --- | --- |
| Equipo de dirección | Dirección | 37 |
| Equipo de desarrollo | Desarrollo | 25 |
| Mario Aroca Páez (Dirección) | Equipo de Dirección | 37 |
| Laura Roldán Merat (Dirección) | Equipo de Dirección | 37 |
| Enrique Caballero Muñoz (Dirección) | Equipo de Dirección | 37 |
| Claudia Gilabert Prieto (Dirección) | Equipo de Dirección | 37 |
| Iván Sánchez San José (Dirección) | Equipo de Dirección | 37 |
| Mario Aroca Páez (Desarrollo) | Equipo de Desarrollo | 25 |
| Laura Roldán Merat (Desarrollo) | Equipo de Desarrollo | 25 |
| Enrique Caballero Muñoz (Desarrollo) | Equipo de Desarrollo | 25 |
| Claudia Gilabert Pietro (Desarrollo) | Equipo de Desarrollo | 25 |
| Iván Sánchez San José (Desarrollo) | Equipo de Desarrollo | 25 |
| Desplazamiento del equipo | Coste Directo | 60 |
| Licencia MS Project | Coste Directo | 100 |
| Licencia GitHub Team | Coste Directo | 36.7 |
| Hosting de la Aplicación | Coste Directo | 20 |
| Equipos de Trabajo | Coste Indirecto10 | 104.17 |
| Seguros | Coste Indirecto | 166.67 |
| Formación del Equipo | Coste Indirecto | 106.85 |
| IVA total del proyecto | Coste Indirecto | 2506.09 |

## Schedule

| ID | WBS | Task | Duration | Start | Finish | Predecessors | Complete | Actual start | Actual finish | Baseline start | Baseline finish | Baseline duration | Constraint | Resources | Work | Actual work | Cost | Baseline cost | Actual cost |
| --- | --- | --- | --- | --- | --- | --- | --- | --- | --- | --- | --- | --- | --- | --- | --- | --- | --- | --- | --- |
| 1 | 1.1 | **Inicio del proyecto** | 5d | 2023-10-05 09:00 A | 2023-10-11 19:00 |  | 100% |  | 2023-10-11 10:04 | 2023-10-05 09:00 | 2023-10-11 19:00 | 5d |  |  | 28.66h | 28.66h | 1,060.42 | 1,060.42 | 1,060.42 |
| 2 | 1.1.A | Preparar una reunión inicial con el patrocinador y el cliente | 2h | 2023-10-05 09:00 A | 2023-10-05 11:00 A |  | 100% |  |  | 2023-10-05 09:00 | 2023-10-05 11:00 | 2h |  | Claudia Gilabert Prieto (Dirección); Enrique Caballero Muñoz (Dirección); Iván Sánchez San José (Dirección); Laura Roldán Merat (Dirección); Mario Aroca Páez (Dirección) | 10h | 10h | 370 | 370 | 370 |
| 3 | 1.1.B | Elaborar el Acta de Constitución | 2.5h | 2023-10-09 09:00 A | 2023-10-09 11:30 A | 2 | 100% |  |  | 2023-10-09 16:30 | 2023-10-09 19:00 | 2.5h | finish no earlier than 2023-10-09 19:00 | Claudia Gilabert Prieto (Dirección); Enrique Caballero Muñoz (Dirección); Iván Sánchez San José (Dirección); Laura Roldán Merat (Dirección); Mario Aroca Páez (Dirección) | 12.5h | 12.5h | 462.5 | 462.5 | 462.5 |
| 4 | 1.1.C | Elaborar el registro de interesados y de supuestos | 2h | 2023-10-10 09:00 A | 2023-10-10 11:00 A | 3 | 100% |  |  | 2023-10-10 09:00 | 2023-10-10 11:00 | 2h |  | Laura Roldán Merat (Dirección); Mario Aroca Páez (Dirección) | 4h | 4h | 148 | 148 | 148 |
| 5 | 1.1.D | Revisar el Acta y que el cliente lo apruebe | 1.08h | 2023-10-11 09:00 A | 2023-10-11 10:04 A | 3 | 100% |  |  | 2023-10-10 09:00 | 2023-10-10 10:04 | 1.08h |  | Enrique Caballero Muñoz (Dirección); Iván Sánchez San José (Dirección) | 2.16h | 2.16h | 79.92 | 79.92 | 79.92 |
| 6 | 1.2 | **Planificación del proyecto** | 22d | 2023-10-12 09:00 | 2023-11-08 19:00 | 1 | 100% | 2023-10-16 09:00 | 2023-11-06 16:00 | 2023-10-12 09:00 | 2023-11-08 19:00 | 22d |  |  | 74h | 74h | 2,714 | 2,714 | 2,714 |
| 7 | 1.2.A | Gestionar el alcance y realizar el enunciado del alcance | 2h | 2023-10-16 09:00 A | 2023-10-16 11:00 A |  | 100% |  |  | 2023-10-16 17:00 | 2023-10-16 19:00 | 2h | finish no earlier than 2023-10-16 19:00 | Claudia Gilabert Prieto (Dirección); Enrique Caballero Muñoz (Dirección); Iván Sánchez San José (Dirección); Laura Roldán Merat (Dirección); Mario Aroca Páez (Dirección) | 10h | 10h | 370 | 370 | 370 |
| 8 | 1.2.B | Gestionar los requisitos y registrarlos | 2h | 2023-10-16 09:00 A | 2023-10-16 11:00 A |  | 100% |  |  | 2023-10-16 17:00 | 2023-10-16 19:00 | 2h | finish no earlier than 2023-10-16 19:00 | Claudia Gilabert Prieto (Dirección); Enrique Caballero Muñoz (Dirección); Iván Sánchez San José (Dirección); Laura Roldán Merat (Dirección); Mario Aroca Páez (Dirección) | 10h | 10h | 370 | 370 | 370 |
| 9 | 1.2.C | Crear la EDT y el diccionario de la EDT | 5.17h | 2023-10-17 09:00 A | 2023-10-17 16:10 A | 7, 8 | 100% |  |  | 2023-10-23 11:49 | 2023-10-23 19:00 | 5.17h | finish no earlier than 2023-10-23 19:00 | Laura Roldán Merat (Dirección); Mario Aroca Páez (Dirección) | 10.34h | 10.34h | 382.58 | 382.58 | 382.58 |
| 10 | 1.2.D | Gestionar el cronograma | 4.83h | 2023-10-17 09:00 A | 2023-10-18 15:49 A | 9 | 100% |  |  | 2023-10-26 12:10 | 2023-10-26 19:00 | 4.83h | finish no earlier than 2023-10-26 19:00 | Enrique Caballero Muñoz (Dirección); Mario Aroca Páez (Dirección) | 9.66h | 9.66h | 357.42 | 357.42 | 357.42 |
| 11 | 1.2.J | Gestionar los recursos | 2h | 2023-10-27 09:00 A | 2023-10-27 11:00 A |  | 100% |  |  | 2023-10-27 09:00 | 2023-10-27 11:00 | 2h | start no earlier than 2023-10-27 09:00 | Claudia Gilabert Prieto (Dirección); Enrique Caballero Muñoz (Dirección) | 4h | 4h | 148 | 148 | 148 |
| 12 | 1.2.F | Gestionar las adquisiciones | 2h | 2023-10-28 09:00 A | 2023-10-28 11:00 A |  | 100% |  |  | 2023-10-28 09:00 | 2023-10-28 11:00 | 2h | start no earlier than 2023-10-28 09:00 | Iván Sánchez San José (Dirección); Laura Roldán Merat (Dirección) | 4h | 4h | 148 | 148 | 148 |
| 13 | 1.2.G | Gestionar los riesgos | 2h | 2023-10-29 09:00 A | 2023-10-29 11:00 A |  | 100% |  |  | 2023-10-29 09:00 | 2023-10-29 11:00 | 2h | start no earlier than 2023-10-29 09:00 | Iván Sánchez San José (Dirección); Mario Aroca Páez (Dirección) | 4h | 4h | 148 | 148 | 148 |
| 14 | 1.2.H | Gestionar la calidad | 2h | 2023-10-30 09:00 A | 2023-10-30 11:00 A |  | 100% |  |  | 2023-10-30 09:00 | 2023-10-30 11:00 | 2h | start no earlier than 2023-10-30 09:00 | Claudia Gilabert Prieto (Dirección); Mario Aroca Páez (Dirección) | 4h | 4h | 148 | 148 | 148 |
| 15 | 1.2.I | Gestionar las comunicaciones | 2h | 2023-10-31 09:00 A | 2023-10-31 11:00 A |  | 100% |  |  | 2023-10-31 09:00 | 2023-10-31 11:00 | 2h | start no earlier than 2023-10-31 09:00 | Enrique Caballero Muñoz (Dirección); Laura Roldán Merat (Dirección) | 4h | 4h | 148 | 148 | 148 |
| 16 | 1.2.E | Gestionar los costes | 2h | 2023-11-01 09:00 A | 2023-11-01 11:00 A | 9, 10, 12, 11 | 100% |  |  | 2023-11-01 09:00 | 2023-11-01 11:00 | 2h | start no earlier than 2023-11-01 09:00 | Enrique Caballero Muñoz (Dirección); Mario Aroca Páez (Desarrollo) | 4h | 4h | 124 | 124 | 124 |
| 17 | 1.2.K | Revisar y cerrar los documentos junto con el patrocinador y cliente | 5h | 2023-11-06 09:00 A | 2023-11-06 16:00 A | 7, 8, 9, 10, 12, 13, 14, 15, 11, 16 | 100% |  |  | 2023-11-06 09:00 | 2023-11-06 16:00 | 5h | start no earlier than 2023-11-05 09:00 | Laura Roldán Merat (Dirección); Mario Aroca Páez (Dirección) | 10h | 10h | 370 | 370 | 370 |
| 18 | 2.1.1.1 | **Adquisición de recursos** | 2d | 2023-11-09 09:00 A | 2023-11-10 19:00 | 6 | 100% |  | 2023-11-09 11:09 | 2023-11-09 09:00 | 2023-11-10 19:00 | 2d |  |  | 16.2h | 16.2h | 599.4 | 599.4 | 599.4 |
| 19 | 2.1.1.1.A | Contratar al equipo de desarrollo | 1.08h | 2023-11-09 09:00 A | 2023-11-09 10:04 A |  | 100% |  |  | 2023-11-09 09:00 | 2023-11-09 10:04 | 1.08h |  | Claudia Gilabert Prieto (Dirección); Enrique Caballero Muñoz (Dirección); Iván Sánchez San José (Dirección); Laura Roldán Merat (Dirección); Mario Aroca Páez (Dirección) | 5.4h | 5.4h | 199.8 | 199.8 | 199.8 |
| 20 | 2.1.1.1.B | Instalar Visual Studio Code como IDE, Django Framework, Python y Git | 1.08h | 2023-11-09 09:00 A | 2023-11-09 10:04 A |  | 100% |  |  | 2023-11-09 09:00 | 2023-11-09 10:04 | 1.08h |  | Claudia Gilabert Prieto (Dirección); Enrique Caballero Muñoz (Dirección); Iván Sánchez San José (Dirección); Laura Roldán Merat (Dirección); Mario Aroca Páez (Dirección) | 5.4h | 5.4h | 199.8 | 199.8 | 199.8 |
| 21 | 2.1.1.1.C | Formar al equipo de desarrollo | 1.08h | 2023-11-09 09:00 A | 2023-11-09 11:09 A | 19, 20 | 100% |  |  | 2023-11-09 10:04 | 2023-11-09 11:09 | 1.08h |  | Claudia Gilabert Prieto (Dirección); Enrique Caballero Muñoz (Dirección); Iván Sánchez San José (Dirección); Laura Roldán Merat (Dirección); Mario Aroca Páez (Dirección) | 5.4h | 5.4h | 199.8 | 199.8 | 199.8 |
| 22 | 2.1.1.2 | **Gestión de usuarios** | 7d | 2023-11-12 09:00 A | 2023-11-19 19:00 | 18 | 100% |  | 2023-11-14 12:00 | 2023-11-12 09:00 | 2023-11-19 19:00 | 7d |  |  | 20h | 20h | 500 | 1,421 | 500 |
| 23 | 2.1.1.2.A | Implementar la gestión de usuarios (CRUD) | 2h | 2023-11-12 09:00 A | 2023-11-12 11:00 A |  | 100% |  |  | 2023-11-11 09:00 | 2023-11-11 16:10 | 5.17h | start no earlier than 2023-11-11 09:00 | Claudia Gilabert Pietro (Desarrollo); Mario Aroca Páez (Desarrollo); Laura Roldán Merat (Desarrollo) | 6h | 6h | 150 | 387.75 | 150 |
| 24 | 2.1.1.2.B | Implementar el registro e inicio de sesión de usuarios | 2h | 2023-11-12 09:00 A | 2023-11-12 13:00 A | 23 | 100% |  |  | 2023-11-12 09:00 | 2023-11-12 12:49 | 3.83h |  | Laura Roldán Merat (Desarrollo) | 2h | 2h | 50 | 95.75 | 50 |
| 25 | 2.1.1.2.C | Implementar la gestión de clientes para administradores (lectura, edición y borrado) | 3h | 2023-11-13 09:00 A | 2023-11-13 12:00 A | 23 | 100% |  |  | 2023-11-12 09:00 | 2023-11-12 19:00 | 8h |  | Enrique Caballero Muñoz (Desarrollo); Claudia Gilabert Pietro (Desarrollo) | 6h | 6h | 150 | 400 | 150 |
| 26 | 2.1.1.2.D | Implementar el diseño visual de la aplicación | 2h | 2023-11-14 09:00 A | 2023-11-14 11:00 A | 23, 24, 25 | 100% |  |  | 2023-11-13 09:00 | 2023-11-13 19:00 | 8h |  | Claudia Gilabert Pietro (Desarrollo); Iván Sánchez San José (Desarrollo) | 4h | 4h | 100 | 400 | 100 |
| 27 | 2.1.1.3.E | Realizar pruebas unitarias de la funcionalidad | 1h | 2023-11-14 09:00 A | 2023-11-14 12:00 A | 23, 24, 25, 26 | 100% |  |  | 2023-11-14 09:00 | 2023-11-14 11:45 | 2.75h |  | Laura Roldán Merat (Desarrollo); Mario Aroca Páez (Desarrollo) | 2h | 2h | 50 | 137.5 | 50 |

| ID | WBS | Task | Duration | Start | Finish | Predecessors | Complete | Actual start | Actual finish | Baseline start | Baseline finish | Baseline duration | Constraint | Resources | Work | Actual work | Cost | Baseline cost | Actual cost |
| --- | --- | --- | --- | --- | --- | --- | --- | --- | --- | --- | --- | --- | --- | --- | --- | --- | --- | --- | --- |
| 28 | 2.1.1.3 | **Gestión de las obras de arte** | 7d | 2023-11-12 09:00 | 2023-11-19 19:00 | 18 | 100% | 2023-11-14 09:00 | 2023-11-15 11:30 | 2023-11-12 09:00 | 2023-11-19 19:00 | 7d |  |  | 8.5h | 8.5h | 212.5 | 385.5 | 212.5 |
| 29 | 2.1.1.3.A | Implementación de CRUD de obras de arte para administradores | 1h | 2023-11-14 09:00 A | 2023-11-14 10:00 A |  | 100% |  |  | 2023-11-14 09:00 | 2023-11-14 15:30 | 4.5h | start no earlier than 2023-11-14 09:00 | Iván Sánchez San José (Desarrollo); Mario Aroca Páez (Desarrollo) | 2h | 2h | 50 | 112.5 | 50 |
| 30 | 2.1.1.3.B | Implementación de lectura de obras de artes para los clientes | 2h | 2023-11-14 09:00 A | 2023-11-14 12:00 A | 29 | 100% |  |  | 2023-11-14 15:30 | 2023-11-14 17:45 | 2.25h |  | Iván Sánchez San José (Desarrollo) | 2h | 2h | 50 | 56.25 | 50 |
| 31 | 2.1.1.3.C | Implementar la búsqueda y filtro de obras de arte | 2.5h | 2023-11-15 09:00 A | 2023-11-15 11:30 A | 29 | 100% |  |  | 2023-11-14 15:30 | 2023-11-14 18:30 | 3h |  | Enrique Caballero Muñoz (Desarrollo) | 2.5h | 2.5h | 62.5 | 75 | 62.5 |
| 32 | 2.1.1.3.D | Implementar el diseño visual de la vista de obras de artes | 1h | 2023-11-14 09:00 A | 2023-11-15 10:00 A | 29, 30, 31 | 100% |  |  | 2023-11-14 18:30 | 2023-11-15 11:25 | 2.92h |  | Mario Aroca Páez (Desarrollo) | 1h | 1h | 25 | 73 | 25 |
| 33 | 2.1.1.3.E | Realizar pruebas unitarias de la funcionalidad | 1h | 2023-11-14 09:00 A | 2023-11-15 10:00 A | 29, 30, 31, 32 | 100% |  |  | 2023-11-15 11:25 | 2023-11-15 16:10 | 2.75h |  | Claudia Gilabert Pietro (Desarrollo); Enrique Caballero Muñoz (Desarrollo) | 1h | 1h | 25 | 68.75 | 25 |
| 34 | 2.1.2.1 | **Compra de obras de arte** | 7d | 2023-11-20 09:00 | 2023-11-27 19:00 | 28, 22 | 100% | 2023-11-19 09:00 | 2023-11-27 12:00 | 2023-11-20 09:00 | 2023-11-26 19:00 | 6d |  |  | 15.42h | 15.42h | 385.5 | 895.5 | 385.5 |
| 35 | 2.1.2.1.A | Implementar la agregación de cuadros en un carrito de la compra | 1.5h | 2023-11-19 09:00 A | 2023-11-20 10:30 A |  | 100% |  |  | 2023-11-20 09:00 | 2023-11-20 12:00 | 3h |  | Claudia Gilabert Pietro (Desarrollo) | 1.5h | 1.5h | 37.5 | 150 | 37.5 |
| 36 | 2.1.2.1.B | Modificar y eliminar elementos dentro del carrito de la compra por parte del cliente | 1.5h | 2023-11-19 09:00 A | 2023-11-20 10:30 A | 35 | 100% |  |  | 2023-11-20 12:00 | 2023-11-20 17:04 | 3.08h |  | Claudia Gilabert Pietro (Desarrollo) | 1.5h | 1.5h | 37.5 | 154 | 37.5 |
| 37 | 2.1.2.1.C | Seleccionar métodos de pago y rellenar formulario de datos | 3h | 2023-11-27 09:00 A | 2023-11-27 12:00 A |  | 100% |  |  | 2023-11-20 09:00 | 2023-11-20 11:00 | 2h |  | Enrique Caballero Muñoz (Desarrollo) | 3h | 3h | 75 | 100 | 75 |
| 38 | 2.1.2.1.D | Implementar pasarelas de pago | 2h | 2023-11-22 09:00 A | 2023-11-22 11:00 A | 37 | 100% |  |  | 2023-11-20 11:00 | 2023-11-20 17:49 | 4.83h |  | Iván Sánchez San José (Desarrollo) | 2h | 2h | 50 | 241.5 | 50 |
| 39 | 2.1.2.1.E | Implementar el diseño visual de la vista de las compras de obras de artes | 2h | 2023-11-22 09:00 A | 2023-11-22 11:00 A | 35, 37 | 100% |  |  | 2023-11-20 12:00 | 2023-11-20 16:04 | 2.08h |  | Claudia Gilabert Pietro (Desarrollo); Iván Sánchez San José (Desarrollo) | 4h | 4h | 100 | 104 | 100 |
| 40 | 2.1.2.1.F | Realizar pruebas unitarias de la funcionalidad | 1h | 2023-11-26 09:00 A | 2023-11-27 10:00 A | 35, 36, 37, 38, 39 | 100% |  |  | 2023-11-20 17:49 | 2023-11-21 10:45 | 2.92h |  | Iván Sánchez San José (Desarrollo); Mario Aroca Páez (Desarrollo) | 1h | 1h | 25 | 146 | 25 |
| 41 | 6.7 | Marcar los productos sin disponibilidad como agotados | 1h | 2023-11-26 09:00 A | 2023-11-26 10:00 A | 30 | 100% |  |  |  |  |  | start no earlier than 2023-11-26 09:00 | Mario Aroca Páez (Desarrollo) | 1h | 1h | 25 |  | 25 |
| 42 | 6.8 | Implementar la pagina de contacto de la empresa | 0.67h | 2023-11-25 09:00 A | 2023-11-26 09:40 A | 26 | 100% |  |  |  |  |  | start no earlier than 2023-11-26 09:00 | Laura Roldán Merat (Desarrollo) | 0.67h | 0.67h | 16.75 |  | 16.75 |
| 43 | 6.9 | Implementar panel de administrador | 0.75h | 2023-11-26 09:00 A | 2023-11-26 09:45 A | 26 | 100% |  |  |  |  |  | start no earlier than 2023-11-26 09:00 | Laura Roldán Merat (Desarrollo) | 0.75h | 0.75h | 18.75 |  | 18.75 |
| 44 | 2.1.3.1 | **Gestión de pedidos** | 8d | 2023-11-27 09:00 | 2023-12-04 19:00 A | 34 | 100% | 2023-11-26 09:00 |  | 2023-11-27 09:00 | 2023-12-03 19:00 | 7d |  |  | 24.5h | 24.5h | 612.5 | 884 | 612.5 |
| 45 | 2.1.3.1.A | Implementar la visualización del pedido por el cliente según ID | 3h | 2023-11-28 09:00 A | 2023-12-04 19:00 A |  | 100% |  |  | 2023-11-27 09:00 | 2023-11-27 15:10 | 4.17h | finish no earlier than 2023-12-04 19:00 | Claudia Gilabert Pietro (Desarrollo); Enrique Caballero Muñoz (Desarrollo) | 6h | 6h | 150 | 208.5 | 150 |
| 46 | 2.1.3.1.B | Implementar la visualización del estado del pedido por el cliente | 2h | 2023-11-29 09:00 A | 2023-12-03 19:00 A |  | 100% |  |  | 2023-11-28 09:00 | 2023-11-28 13:00 | 4h | finish no earlier than 2023-12-03 19:00 | Iván Sánchez San José (Desarrollo); Laura Roldán Merat (Desarrollo) | 4h | 4h | 100 | 200 | 100 |
| 47 | 2.1.3.1.C | Implementar la visualización de todos los pedidos por el administrador | 0.75h | 2023-12-04 09:00 A | 2023-12-04 09:45 A |  | 100% |  |  | 2023-11-29 09:00 | 2023-11-29 15:10 | 4.17h | start no earlier than 2023-11-29 09:00 | Claudia Gilabert Pietro (Desarrollo); Mario Aroca Páez (Desarrollo) | 1.5h | 1.5h | 37.5 | 208.5 | 37.5 |
| 48 | 2.1.3.1.D | Implementar el diseño visual de la vista de los pedidos | 1.5h | 2023-12-03 17:30 A | 2023-12-03 19:00 A |  | 100% |  |  | 2023-11-30 09:00 | 2023-11-30 11:10 | 2.17h | finish no earlier than 2023-12-03 19:00 | Enrique Caballero Muñoz (Desarrollo); Iván Sánchez San José (Desarrollo) | 3h | 3h | 75 | 108.5 | 75 |
| 49 | 2.1.3.1.E | Realizar pruebas unitarias de la funcionalidad | 1h | 2023-12-04 09:00 A | 2023-12-04 19:00 A | 45, 46, 47, 48 | 100% |  |  | 2023-12-01 09:00 | 2023-12-01 12:10 | 3.17h | finish no earlier than 2023-12-04 19:00 | Iván Sánchez San José (Desarrollo) | 1h | 1h | 25 | 158.5 | 25 |
| 50 | 7.6 | Implementar la gestión de clientes para adminsitradores | 4h | 2023-11-26 09:00 A | 2023-11-27 13:00 A |  | 100% |  |  |  |  |  |  | Laura Roldán Merat (Desarrollo) | 4h | 4h | 100 |  | 100 |
| 51 | 7.7 | Implementar el registro e inicio de sesión de usuarios (Incidencia) | 1h | 2023-11-26 09:00 A | 2023-11-27 10:00 A |  | 100% |  |  |  |  |  |  | Claudia Gilabert Pietro (Desarrollo); Laura Roldán Merat (Desarrollo) | 2h | 2h | 50 |  | 50 |
| 52 | 7.8 | Arreglos finales en la pagina web | 3h | 2023-12-02 09:00 A | 2023-12-04 19:00 A |  | 100% |  |  |  |  |  | finish no earlier than 2023-12-04 19:00 | Laura Roldán Merat (Desarrollo) | 3h | 3h | 75 |  | 75 |

| ID | WBS | Task | Duration | Start | Finish | Predecessors | Complete | Actual start | Actual finish | Baseline start | Baseline finish | Baseline duration | Total slack | Free slack | Constraint | Resources | Work | Actual work | Cost | Baseline cost | Actual cost |
| --- | --- | --- | --- | --- | --- | --- | --- | --- | --- | --- | --- | --- | --- | --- | --- | --- | --- | --- | --- | --- | --- |
| 53 | 2.2.1 | **Monitorización y control del avance del proyecto** | 26d | 2023-11-09 09:00 | 2023-12-07 19:00 | 1, 6 | 100% | 2023-11-12 09:00 | 2023-12-04 19:00 | 2023-11-09 09:00 | 2023-12-07 19:00 | 25d |  |  |  |  | 72h | 72h | 2,664 | 3,157.95 | 2,664 |
| 54 | 2.2.1.A | Validar y controlar el alcance | 3h | 2023-11-12 09:00 A | 2023-12-04 19:00 A |  | 100% |  |  | 2023-11-09 09:00 | 2023-11-09 11:00 | 2h |  |  | finish no earlier than 2023-12-04 19:00 | Claudia Gilabert Prieto (Dirección); Laura Roldán Merat (Dirección); Mario Aroca Páez (Dirección) | 9h | 9h | 333 | 370 | 333 |
| 55 | 2.2.1.B | Controlar el cronograma | 3h | 2023-11-12 09:00 A | 2023-12-04 19:00 A |  | 100% |  |  | 2023-11-10 09:00 | 2023-11-10 12:00 | 3h |  |  | finish no earlier than 2023-12-04 19:00 | Claudia Gilabert Prieto (Dirección); Laura Roldán Merat (Dirección); Mario Aroca Páez (Dirección) | 9h | 9h | 333 | 555 | 333 |
| 56 | 2.2.1.C | Controlar los costes | 3h | 2023-11-12 09:00 A | 2023-12-04 19:00 A |  | 100% |  |  | 2023-11-11 09:00 | 2023-11-11 11:04 | 2.08h |  |  | finish no earlier than 2023-12-04 19:00 | Claudia Gilabert Prieto (Dirección); Laura Roldán Merat (Dirección); Mario Aroca Páez (Dirección) | 9h | 9h | 333 | 384.8 | 333 |
| 57 | 2.2.1.D | Controlar la calidad | 3h | 2023-11-12 09:00 A | 2023-12-04 19:00 A |  | 100% |  |  | 2023-11-12 09:00 | 2023-11-12 11:04 | 2.08h |  |  | finish no earlier than 2023-12-04 19:00 | Enrique Caballero Muñoz (Dirección); Iván Sánchez San José (Dirección); Mario Aroca Páez (Dirección) | 9h | 9h | 333 | 384.8 | 333 |
| 58 | 2.2.1.E | Controlar los recursos y adquisiciones | 3h | 2023-11-12 09:00 A | 2023-11-12 12:00 A |  | 100% |  |  | 2023-11-13 09:00 | 2023-11-13 10:40 | 1.67h |  |  | start no earlier than 2023-11-13 09:00 | Claudia Gilabert Prieto (Dirección); Laura Roldán Merat (Dirección); Mario Aroca Páez (Dirección) | 9h | 9h | 333 | 308.95 | 333 |
| 59 | 2.2.1.F | Monitorizar las comunicaciones | 3h | 2023-11-12 09:00 A | 2023-12-04 19:00 A |  | 100% |  |  | 2023-11-14 09:00 | 2023-11-14 11:04 | 2.08h |  |  | finish no earlier than 2023-12-04 19:00 | Claudia Gilabert Prieto (Dirección); Laura Roldán Merat (Dirección); Mario Aroca Páez (Dirección) | 9h | 9h | 333 | 384.8 | 333 |
| 60 | 2.2.1.G | Monitorizar los riesgos | 3h | 2023-11-12 09:00 A | 2023-11-12 12:00 A |  | 100% |  |  | 2023-11-15 09:00 | 2023-11-15 11:04 | 2.08h |  |  | start no earlier than 2023-11-15 09:00 | Claudia Gilabert Prieto (Dirección); Laura Roldán Merat (Dirección); Mario Aroca Páez (Dirección) | 9h | 9h | 333 | 384.8 | 333 |
| 61 | 2.2.1.H | Monitorizar los interesados | 3h | 2023-11-12 09:00 A | 2023-12-04 19:00 A |  | 100% |  |  | 2023-11-16 09:00 | 2023-11-16 11:04 | 2.08h |  |  | finish no earlier than 2023-12-04 19:00 | Claudia Gilabert Prieto (Dirección); Laura Roldán Merat (Dirección); Mario Aroca Páez (Dirección) | 9h | 9h | 333 | 384.8 | 333 |
| 62 | 2.2.2 | **Control de cambios** | 26d | 2023-11-09 09:00 | 2023-12-07 19:00 | 1, 6 | 100% | 2023-11-12 09:00 | 2023-12-04 19:00 | 2023-11-09 09:00 | 2023-12-07 19:00 | 25d |  |  |  |  | 15h | 15h | 555 | 969.4 | 555 |
| 63 | 2.2.2.A | Realizar informes de desempeño del equipo | 3h | 2023-11-12 09:00 A | 2023-12-04 19:00 A |  | 100% |  |  | 2023-11-09 09:00 | 2023-11-09 10:04 | 1.08h |  |  | finish no earlier than 2023-12-04 19:00 | Laura Roldán Merat (Dirección); Mario Aroca Páez (Dirección) | 6h | 6h | 222 | 199.8 | 222 |
| 64 | 2.2.2.B | Generar una Solicitud de Cambio cuando sea necesario | 3h | 2023-11-12 09:00 A | 2023-12-04 19:00 A |  | 100% |  |  | 2023-11-10 09:00 | 2023-11-10 10:04 | 1.08h |  |  | finish no earlier than 2023-12-04 19:00 | Laura Roldán Merat (Dirección); Mario Aroca Páez (Dirección) | 6h | 6h | 222 | 199.8 | 222 |
| 65 | 2.2.2.C | Revisar la solicitud que corresponda al equipo de dirección o comité | 0.5h | 2023-11-12 09:00 A | 2023-12-04 19:00 A |  | 100% |  |  | 2023-11-13 09:00 | 2023-11-13 10:04 | 1.08h |  |  | finish no earlier than 2023-12-04 19:00 | Claudia Gilabert Prieto (Dirección); Mario Aroca Páez (Dirección) | 1h | 1h | 37 | 199.8 | 37 |
| 66 | 2.2.2.D | Efectuar cambio en caso de aceptación | 1h | 2023-11-12 09:00 A | 2023-12-04 19:00 A |  | 100% |  |  | 2023-11-14 09:00 | 2023-11-14 11:00 | 2h |  |  | finish no earlier than 2023-12-04 19:00 | Claudia Gilabert Prieto (Dirección); Mario Aroca Páez (Dirección) | 2h | 2h | 74 | 370 | 74 |
| 67 | 3.1 | **Entrega del proyecto** | 4d | 2023-12-08 09:00 | 2023-12-13 19:00 | 62, 53, 44 |  |  |  | 2023-12-08 09:00 | 2023-12-13 19:00 | 4d |  |  |  |  | 14.3h |  | 357.5 | 357.5 |  |
| 68 | 3.1.A | Gestionar el versionado de la página web y migración de datos | 2.5h | 2023-12-08 09:00 | 2023-12-08 11:30 |  |  |  |  | 2023-12-08 09:00 | 2023-12-08 11:30 | 2.5h | 2.95d | 0d |  | Claudia Gilabert Pietro (Desarrollo) | 2.5h |  | 62.5 | 62.5 |  |
| 69 | 3.1.B | Empaquetar y distribuir la aplicación | 2.08h | 2023-12-08 11:30 | 2023-12-08 15:34 | 68 |  |  |  | 2023-12-08 11:30 | 2023-12-08 15:34 | 2.08h | 2.95d | 0d |  | Enrique Caballero Muñoz (Desarrollo); Iván Sánchez San José (Desarrollo) | 4.16h |  | 104 | 104 |  |
| 70 | 3.1.C | Realizar la entrega y el despliegue de la aplicación | 3.82h | 2023-12-08 15:34 | 2023-12-11 09:24 | 69 |  |  |  | 2023-12-08 15:34 | 2023-12-11 09:24 | 3.82h | 2.95d |  |  | Laura Roldán Merat (Desarrollo); Mario Aroca Páez (Desarrollo) | 7.64h |  | 191 | 191 |  |
| 71 | 3.2 | **Cierre del proyecto** | 4d | 2023-12-08 09:00 | 2023-12-13 19:00 | 44, 53, 62 |  |  |  | 2023-12-08 09:00 | 2023-12-13 19:00 | 4d |  |  |  |  | 11.72h |  | 433.64 | 433.64 |  |
| 72 | 3.2.A | Reunión de cierre del proyecto | 1.08h | 2023-12-08 09:00 | 2023-12-08 10:04 |  |  |  |  | 2023-12-08 09:00 | 2023-12-08 10:04 | 1.08h | 3.47d | 0d |  | Claudia Gilabert Prieto (Dirección); Enrique Caballero Muñoz (Dirección); Iván Sánchez San José (Dirección); Laura Roldán Merat (Dirección); Mario Aroca Páez (Dirección) | 5.4h |  | 199.8 | 199.8 |  |
| 73 | 3.2.B | Realizar el Informe de Cierre | 1.08h | 2023-12-08 10:04 | 2023-12-08 11:09 | 72 |  |  |  | 2023-12-08 10:04 | 2023-12-08 11:09 | 1.08h | 3.47d | 0d |  | Enrique Caballero Muñoz (Dirección); Iván Sánchez San José (Dirección) | 2.16h |  | 79.92 | 79.92 |  |
| 74 | 3.2.C | Realizar el Acta de Aceptación del Producto | 2.08h | 2023-12-08 11:09 | 2023-12-08 15:14 | 73 |  |  |  | 2023-12-08 11:09 | 2023-12-08 15:14 | 2.08h | 3.47d |  |  | Laura Roldán Merat (Dirección); Mario Aroca Páez (Dirección) | 4.16h |  | 153.92 | 153.92 |  |
| 75 | 3.3 | **Reporte final del proyecto** | 4d | 2023-12-08 09:00 | 2023-12-13 19:00 | 44, 53, 62 |  |  |  | 2023-12-08 09:00 | 2023-12-13 19:00 | 4d |  |  |  |  | 19.8h |  | 732.6 | 732.6 |  |
| 76 | 3.3.B | Revisión del cronograma final con desviaciones | 1.08h | 2023-12-08 09:00 | 2023-12-08 10:04 |  |  |  |  | 2023-12-08 09:00 | 2023-12-08 10:04 | 1.08h | 3.49d | 0d |  | Claudia Gilabert Prieto (Dirección); Enrique Caballero Muñoz (Dirección); Iván Sánchez San José (Dirección); Laura Roldán Merat (Dirección); Mario Aroca Páez (Dirección) | 5.4h |  | 199.8 | 199.8 |  |
| 77 | 3.3.A | Resumir el presupuesto final del proyecto | 1.08h | 2023-12-08 10:04 | 2023-12-08 11:09 | 76 |  |  |  | 2023-12-08 10:04 | 2023-12-08 11:09 | 1.08h | 3.54d | 0.05d |  | Claudia Gilabert Prieto (Dirección); Enrique Caballero Muñoz (Dirección); Iván Sánchez San José (Dirección); Laura Roldán Merat (Dirección); Mario Aroca Páez (Dirección) | 5.4h |  | 199.8 | 199.8 |  |
| 78 | 3.3.C | Archivar toda la documentación pertinente del proyecto | 1.5h | 2023-12-08 10:04 | 2023-12-08 11:34 | 76 |  |  |  | 2023-12-08 10:04 | 2023-12-08 11:34 | 1.5h | 3.49d | 0d |  | Claudia Gilabert Prieto (Dirección) | 1.5h |  | 55.5 | 55.5 |  |
| 79 | 3.3.D | Anotar las lecciones aprendidas | 1.5h | 2023-12-08 11:34 | 2023-12-08 15:04 | 76, 77, 78 |  |  |  | 2023-12-08 11:34 | 2023-12-08 15:04 | 1.5h | 3.49d |  |  | Claudia Gilabert Prieto (Dirección); Enrique Caballero Muñoz (Dirección); Iván Sánchez San José (Dirección); Laura Roldán Merat (Dirección); Mario Aroca Páez (Dirección) | 7.5h |  | 277.5 | 277.5 |  |
